Schedule from MS Project, 2024-01-25 to 2024-12-13, status date 2024-05-13, costs in р., A marks actual dates.

## Calendars

- Стандартный: Mon-Fri 09:00-13:00, 14:00-18:00; Sat-Sun off. Exceptions (off unless hours are given): 2024-03-30 09:00-13:00, 14:00-18:00.

## Resources

| Resource | Unit | Rate |
| --- | --- | --- |
| Компьютер | штука | 30000 |
| Компьютерная мышь | штука | 1000 |
| Клавиатура | штука | 2000 |
| Бумага | пачка | 300 |
| Принтер | штука | 20000 |
| Сервер | штука | 2000000 |
| Сетевое оборудование | комплект | 500000 |
| Хранилище данных | штука | 3000000 |
| Аналитик |  | 1500 |
| Проектировщик |  | 1800 |
| Редактор |  | 800 |
| Фронтенд разработчик |  | 3000 |
| Бэкенд разработчик |  | 3000 |
| Руководитель проекта |  | 3500 |
| Копирайтер |  | 200 |
| Системный администратор |  | 2200 |
| Постоянные расходы |  |  |
| Непредвиденные расходы |  |  |
| Монитор | штука | 5000 |
| Тестировщик |  | 1500 |

## Schedule

| ID | WBS | Task | Type | Duration | Start | Finish | Predecessors | Complete | Remaining | Total slack | Constraint | Resources | Work | Actual work | Cost | Actual cost |
| --- | --- | --- | --- | --- | --- | --- | --- | --- | --- | --- | --- | --- | --- | --- | --- | --- |
| 1 | 1 | **Этап 0. Подготовка проекта** |  | 15d | 2024-01-25 A | 2024-02-14 A |  | 100% |  |  |  |  | 216h | 216h | 775,900 | 775,900 |
| 2 | 1.1 | Анализ предметной области |  | 2d | 2024-01-25 A | 2024-01-30 A |  | 100% |  |  |  | Аналитик; Бумага [4 пачка]; Клавиатура [1 штука]; Компьютер [1 штука]; Компьютерная мышь [1 штука]; Принтер [1 штука]; Проектировщик; Руководитель проекта; Постоянные расходы [0.1%]; Редактор; Копирайтер; Монитор | 64h | 64h | 175,800 | 175,800 |
| 3 | 1.2 | Составление моделей работы программного продукта |  | 4d | 2024-01-31 A | 2024-02-06 A | 2 | 100% |  |  |  | Бумага [4 пачка]; Клавиатура [2 штука]; Компьютер [2 штука]; Компьютерная мышь [2 штука]; Принтер [2 штука]; Проектировщик; Руководитель проекта; Постоянные расходы [0.1%]; Редактор; Аналитик; Копирайтер; Монитор [1 штука] | 96h | 96h | 307,400 | 307,400 |
| 4 | 1.3 | Разработка ТЗ |  | 2d | 2024-02-07 A | 2024-02-09 A | 3 | 100% |  |  |  | Бумага [4 пачка]; Клавиатура [2 штука]; Компьютер [2 штука]; Принтер [2 штука]; Проектировщик; Руководитель проекта; Постоянные расходы [0.1%]; Аналитик; Компьютерная мышь [1 штука]; Монитор [1 штука] | 32h | 32h | 196,000 | 196,000 |
| 5 | 1.4 | Утверждение ТЗ |  | 3d | 2024-02-10 A | 2024-02-14 A | 4 | 100% |  |  |  | Бумага [5 пачка]; Клавиатура [1 штука]; Компьютер [1 штука]; Непредвиденные расходы [0.1%]; Принтер [1 штука]; Проектировщик; Постоянные расходы [0.1%]; Компьютерная мышь; Монитор; Руководитель проекта | 24h | 24h | 96,700 | 96,700 |
| 6 | 2 | **Этап 1. Сбор требований** |  | 12d | 2024-02-15 A | 2024-03-01 A | 1 | 100% |  |  |  |  | 88h | 88h | 215,600 | 215,600 |
| 7 | 2.1 | Анализ требований и потребностей пользователей |  | 5d | 2024-02-15 A | 2024-02-21 A | 5 | 100% |  |  |  | Аналитик; Бумага [1 пачка]; Клавиатура [1 штука]; Компьютер [1 штука]; Компьютерная мышь [1 штука]; Принтер [1 штука]; Постоянные расходы [0.1%]; Редактор; Монитор | 80h | 80h | 145,300 | 145,300 |
| 8 | 2.2 | Анализ рынка, выявление обязательных функций программы |  | 1d | 2024-02-29 A | 2024-03-01 A | 7 | 100% |  |  | finish no earlier than 2024-03-01 | Аналитик; Бумага [1 пачка]; Клавиатура [1 штука]; Компьютер [1 штука]; Компьютерная мышь [1 штука]; Принтер [1 штука]; Постоянные расходы [0.1%]; Непредвиденные расходы [0.1%]; Монитор [1 штука] | 8h | 8h | 70,300 | 70,300 |
| 9 | 3 | **Этап 2. Архитектура и дизайн** |  | 10d | 2024-03-15 A | 2024-03-28 A | 6 | 100% |  |  |  |  | 128h | 128h | 3,694,000 | 3,694,000 |
| 10 | 3.1 | Проектирование модулей |  | 4d | 2024-03-15 A | 2024-03-20 A | 8 | 100% |  |  |  | Клавиатура [2 штука]; Компьютер [2 штука]; Компьютерная мышь [2 штука]; Фронтенд разработчик; Бэкенд разработчик; Руководитель проекта; Постоянные расходы [0.1%]; Монитор [2 штука] | 96h | 96h | 380,000 | 380,000 |
| 11 | 3.2 | Создание диаграммы классов приложения |  | 1d | 2024-03-21 A | 2024-03-22 A | 10 | 100% |  |  |  | Клавиатура [2 штука]; Компьютер [2 штука]; Компьютерная мышь [2 штука]; Фронтенд разработчик; Бэкенд разработчик; Постоянные расходы [0.1%]; Монитор | 16h | 16h | 114,000 | 114,000 |
| 12 | 3.3 | Создание схем работы классов приложения |  | 1d | 2024-03-24 A | 2024-03-25 A | 11 | 100% |  |  |  | Клавиатура [2 штука]; Компьютер [2 штука]; Компьютерная мышь [2 штука]; Фронтенд разработчик; Бэкенд разработчик; Постоянные расходы [0.1%]; Монитор [2 штука] | 16h | 16h | 124,000 | 124,000 |
| 13 | 3.4 | Разработка структуры базы данных программы | milestone | 0d | 2024-03-28 A | 2024-03-28 A | 12 | 100% |  |  |  | Клавиатура [2 штука]; Компьютер [2 штука]; Компьютерная мышь [2 штука]; Непредвиденные расходы [0.1%]; Фронтенд разработчик; Бэкенд разработчик; Постоянные расходы [0.1%]; Хранилище данных [1 штука]; Монитор [2 штука] |  |  | 3,076,000 | 3,076,000 |
| 14 | 4 | **Этап 3. Разработка** |  | 43d | 2024-03-31 A | 2024-05-29 | 9 | 84% | 6.79d | 0d |  |  | 696h | 456h | 12,133,100 | 11,431,800 |
| 15 | 4.1 | Разработка модулей |  | 7d | 2024-03-31 A | 2024-04-09 A | 13 | 100% |  |  |  | Клавиатура [1 штука]; Компьютер [1 штука]; Компьютерная мышь [1 штука]; Фронтенд разработчик; Сервер [1 штука]; Хранилище данных [1 штука]; Постоянные расходы [0.1%]; Монитор [1 штука] | 56h | 56h | 5,206,000 | 5,206,000 |
| 16 | 4.2 | Разработка интерфейса |  | 12d | 2024-04-12 A | 2024-05-02 A | 15 | 100% |  |  |  | Клавиатура [2 штука]; Компьютер [2 штука]; Компьютерная мышь [2 штука]; Фронтенд разработчик; Бэкенд разработчик; Сервер [1 штука]; Постоянные расходы [0.1%]; Монитор [2 штука] | 192h | 192h | 2,652,000 | 2,652,000 |
| 17 | 4.3 | Создание базы данных прложения |  | 13d | 2024-05-03 A | 2024-05-21 A | 16 | 100% |  |  |  | Клавиатура [1 штука]; Компьютер [1 штука]; Компьютерная мышь [1 штука]; Бэкенд разработчик; Постоянные расходы [0.1%]; Системный администратор; Хранилище данных [1 штука]; Монитор | 208h | 208h | 3,573,800 | 3,573,800 |
| 18 | 4.4 | Создание документации по работе базы данных |  | 6d | 2024-05-22 | 2024-05-29 | 17 |  |  | 0d |  | Бумага [1 пачка]; Клавиатура [1 штука]; Компьютер [1 штука]; Компьютерная мышь [1 штука]; Непредвиденные расходы [0.1%]; Принтер [1 штука]; Проектировщик; Фронтенд разработчик; Бэкенд разработчик; Руководитель проекта; Системный администратор | 240h |  | 701,300 |  |
| 19 | 5 | **Этап 4. Тестирование** |  | 15d | 2024-05-30 | 2024-06-19 | 14 |  |  | 0d |  |  | 440h |  | 12,522,000 |  |
| 20 | 5.1 | Тестирование программы и её отладка |  | 5d | 2024-05-30 | 2024-06-05 | 18 |  |  | 0d |  | Клавиатура [1 штука]; Компьютер [1 штука]; Компьютерная мышь [1 штука]; Фронтенд разработчик; Бэкенд разработчик; Постоянные расходы [0.1%]; Сервер [1 штука]; Системный администратор; Хранилище данных [1 штука]; Монитор [1 штука]; Сетевое оборудование [1 комплект] | 120h |  | 5,866,000 |  |
| 21 | 5.2 | Исправление выявленных ошибок |  | 10d | 2024-06-06 | 2024-06-19 | 20 |  |  | 0d |  | Клавиатура [10 штука]; Компьютер [10 штука]; Компьютерная мышь [10 штука]; Непредвиденные расходы [0.1%]; Фронтенд разработчик; Бэкенд разработчик; Постоянные расходы [0.1%]; Сервер [1 штука]; Системный администратор; Хранилище данных [1 штука]; Монитор [10 штука]; Сетевое оборудование [1 комплект]; Тестировщик | 320h |  | 6,656,000 |  |
| 22 | 6 | **Этап 5. Внедрение** |  | 37d | 2024-06-20 | 2024-08-09 | 19 |  |  | 0d |  |  | 1000h |  | 12,733,400 |  |
| 23 | 6.1 | Создание плана внедрения, определение ключевых этапов |  | 22d | 2024-06-20 | 2024-07-19 | 21 |  |  | 0d |  | Бумага [2 пачка]; Клавиатура [1 штука]; Компьютер [1 штука]; Компьютерная мышь [1 штука]; Копирайтер; Непредвиденные расходы [0.1%]; Принтер [1 штука]; Руководитель проекта; Постоянные расходы [0.1%]; Сервер [1 штука]; Сетевое оборудование [1 комплект]; Редактор; Аналитик; Монитор [1 штука]; Проектировщик | 880h |  | 3,931,400 |  |
| 24 | 6.2 | Внедрение и обучение пользователей |  | 15d | 2024-07-22 | 2024-08-09 | 23, 18 |  |  | 0d |  | Клавиатура [1 штука]; Компьютер [1 штука]; Компьютерная мышь [1 штука]; Постоянные расходы [0.1%]; Сервер [1 штука]; Сетевое оборудование [1 комплект]; Хранилище данных [2 штука]; Системный администратор; Монитор [1 штука] | 120h |  | 8,802,000 |  |

| ID | WBS | Task | Duration | Start | Finish | Predecessors | Total slack | Resources | Work | Cost |
| --- | --- | --- | --- | --- | --- | --- | --- | --- | --- | --- |
| 25 | 7 | **Этап 6. Поддержка** | 90d | 2024-08-12 | 2024-12-13 | 22 | 0d |  | 1440h | 8,658,000 |
| 26 | 7.1 | Осуществление поддержи | 60d | 2024-08-12 | 2024-12-13 | 23 | 0d | Системный администратор; Клавиатура [1 штука]; Компьютер [1 штука]; Компьютерная мышь [1 штука]; Непредвиденные расходы [0.1%]; Руководитель проекта; Постоянные расходы [0.1%]; Сервер [1 штука]; Сетевое оборудование [1 комплект]; Редактор; Хранилище данных [1 штука]; Монитор [1 штука] | 1440h | 8,658,000 |
